Schedule from ProjectLibre, 2021-06-22 to 2021-08-25.

## Calendars

- Standard[Imported]: Mon-Fri 08:00-12:00, 13:00-17:00; Sat-Sun off.

## Resources

| Resource |
| --- |
| Unassigned |
| Peter |
| George |
| External |

## Schedule

| ID | WBS | Task | Type | Duration | Start | Finish | Predecessors | Resources |
| --- | --- | --- | --- | --- | --- | --- | --- | --- |
| 1 | 1 | **External milestones** |  | 29d | 2021-06-22 | 2021-07-30 |  |  |
| 2 | 1.1 | Motor Arrives | milestone | 0d | 2021-06-22 | 2021-07-30 |  |  |
| 3 | 1.2 | VCU Arrives | milestone | 0d | 2021-06-22 | 2021-07-30 |  |  |
| 4 | 2 | **Project Milestones** |  | 47d | 2021-06-22 | 2021-08-25 |  |  |
| 5 | 2.1 | M1: Motor Spin | milestone | 0d | 2021-08-04 | 2021-08-04 | 22 |  |
| 6 | 2.2 | Motor Fitted | milestone | 0d | 2021-08-25 | 2021-08-25 | 23 |  |
| 7 | 2.3 | Temporary Batttery | milestone | 0d | 2021-06-22 | 2021-06-22 |  |  |
| 8 | 2.4 | Battery Design | milestone | 0d | 2021-06-23 | 2021-06-23 | 29 |  |
| 9 | 2.5 | Auxiliary Equipment | milestone | 0d | 2021-06-22 | 2021-06-22 | 39 |  |
| 10 | 2.6 | Charging System | milestone | 0d | 2021-06-25 | 2021-06-25 | 44 |  |
| 11 | 2.7 | Functional Battery Pack | milestone | 0d | 2021-06-25 | 2021-06-25 | 49 |  |
| 12 | 2.8 | Engineering Approval | milestone | 0d | 2021-06-22 | 2021-06-22 | 55 |  |
| 13 | 2.9 | Registered Vehicle | milestone | 0d | 2021-06-23 | 2021-06-23 | 57 |  |
| 15 | 4 | **Motor Spinning Prep** |  | 30d | 2021-06-22 | 2021-08-02 |  |  |
| 16 | 4.1 | Bench PSU (340v) |  | 14d | 2021-06-22 | 2021-07-09 |  | Peter |
| 17 | 4.2 | VCU Controller |  | 1d | 2021-06-22 | 2021-06-22 |  | George |
| 18 | 4.3 | 12v PSU |  | 1d | 2021-06-22 | 2021-06-22 |  | George |
| 19 | 4.4 | Bench and location |  | 1d | 2021-06-22 | 2021-06-22 |  | George |
| 20 | 4.5 | Remove existing Controller |  | 1d | 2021-08-02 | 2021-08-02 | 2 | George |
| 21 | 4.6 | Coolant Pump |  | 1d | 2021-06-22 | 2021-06-22 |  | George |
| 22 | 5 | Motor Spin Assemble and Test |  | 2d | 2021-08-03 | 2021-08-04 | 15, 2, 3 |  |
| 23 | 6 | **Fit Motor** |  | 18d | 2021-08-02 | 2021-08-25 |  |  |
| 24 | 6.1 | Expore mounting and coupling ideas |  | 5d | 2021-08-02 | 2021-08-06 | 2 |  |
| 25 | 6.2 | Fabricate components |  | 5d | 2021-08-16 | 2021-08-20 | 28 |  |
| 26 | 6.3 | Mount the motor |  | 2d | 2021-08-23 | 2021-08-24 | 25 |  |
| 27 | 6.4 | Test in place |  | 1d | 2021-08-25 | 2021-08-25 | 26, 22 |  |
| 28 | 6.5 | Design coupling and mounts |  | 5d | 2021-08-09 | 2021-08-13 | 24 |  |

| ID | WBS | Task | Duration | Start | Finish | Predecessors |
| --- | --- | --- | --- | --- | --- | --- |
| 29 | 7 | **Design Battery** | 2d? | 2021-06-22 | 2021-06-23 |  |
| 30 | 7.1 | Design Mechanical Structure | 1d? | 2021-06-22 | 2021-06-22 |  |
| 31 | 7.2 | Design physical distribution | 1d? | 2021-06-22 | 2021-06-22 |  |
| 32 | 7.3 | **Design Cooling** | 2d? | 2021-06-22 | 2021-06-23 |  |
| 33 | 7.3.1 | Initial Designs | 1d | 2021-06-22 | 2021-06-22 |  |
| 34 | 7.3.2 | Modelling | 1d? | 2021-06-23 | 2021-06-23 | 33 |
| 35 | 7.3.3 | <New Task> | 1d? | 2021-06-22 | 2021-06-22 |  |
| 36 | 7.3.4 | <New Task> | 1d? | 2021-06-22 | 2021-06-22 |  |
| 37 | 8 | **Make Temp Battery** | 1d? | 2021-06-22 | 2021-06-22 |  |
| 38 | 8.1 | <New Task> | 1d? | 2021-06-22 | 2021-06-22 |  |
| 39 | 9 | **Construct and Mount Aux Equipment** | 1d? | 2021-06-22 | 2021-06-22 |  |
| 40 | 9.1 | **Vacuum System** | 1d? | 2021-06-22 | 2021-06-22 |  |
| 41 | 9.1.1 | <New Task> | 1d? | 2021-06-22 | 2021-06-22 |  |
| 42 | 9.2 | **12v System** | 1d? | 2021-06-22 | 2021-06-22 |  |
| 43 | 9.2.1 | <New Task> | 1d? | 2021-06-22 | 2021-06-22 |  |
| 44 | 10 | **Construct and Install Battery Charger** | 4d? | 2021-06-22 | 2021-06-25 |  |
| 45 | 10.1 | Source components and materials | 1d? | 2021-06-22 | 2021-06-22 |  |
| 46 | 10.2 | Build | 1d? | 2021-06-23 | 2021-06-23 | 45 |
| 47 | 10.3 | Test | 1d? | 2021-06-24 | 2021-06-24 | 46 |
| 48 | 10.4 | Install | 1d? | 2021-06-25 | 2021-06-25 | 47 |
| 49 | 11 | **Construct and Install Final Battery Pack** | 4d? | 2021-06-22 | 2021-06-25 |  |
| 50 | 11.1 | Source Components and materials | 1d? | 2021-06-22 | 2021-06-22 |  |
| 51 | 11.2 | Design BMS | 1d? | 2021-06-22 | 2021-06-22 |  |
| 52 | 11.3 | Install | 1d? | 2021-06-24 | 2021-06-24 | 59 |
| 53 | 11.4 | Final testing | 1d? | 2021-06-25 | 2021-06-25 | 52 |
| 54 | 11.5 | Build Modules | 1d? | 2021-06-23 | 2021-06-23 | 50 |

| ID | WBS | Task | Duration | Start | Finish | Predecessors |
| --- | --- | --- | --- | --- | --- | --- |
| 55 | 12 | **Get Engineering Approval** | 1d? | 2021-06-22 | 2021-06-22 |  |
| 56 | 12.1 | <New Task> | 1d? | 2021-06-22 | 2021-06-22 |  |
| 57 | 13 | **Register the vehicle** | 1d? | 2021-06-23 | 2021-06-23 | 55 |
| 58 | 13.1 | <New Task> | 1d? | 2021-06-23 | 2021-06-23 |  |
| 59 | 13.2 | Test Modules | 1d? | 2021-06-23 | 2021-06-23 |  |
